# Provision of Quality Water For Woji Community

Schedule from MS Project, 2024-06-24 to 2024-09-04, status date 2024-06-23, costs in $, A marks actual dates.

## Calendars

- Standard: Mon-Fri 08:00-12:00, 13:00-17:00; Sat-Sun off. Exceptions (off unless hours are given): 2024-07-06 08:00-12:00, 13:00-17:00, 2024-08-03 08:00-12:00, 13:00-17:00, 2024-08-10 08:00-12:00, 13:00-17:00, 2024-08-31 08:00-12:00, 13:00-17:00.

## Resources

| Resource |
| --- |
| Community Liaison Officer (CLO) |
| CLO |
| Geological Engineer |
| Field Assistant |
| Lab Technician |
| Geophysicist |
| Field Technician |
| Data Analyst |
| Drilling Crew |
| Trucks |
| Rig |
| Diesel |
| Laborers |
| Procurement Specialist |
| Pump Installation Specialist |
| Electrician |
| Water Quality Analyst |
| Cleanup Crew |
| Installation Specialist |

## Schedule

| ID | WBS | Task | Type | Duration | Start | Finish | Predecessors | Complete | Remaining | Total slack | Free slack | Constraint | Resources | Work | Actual work | Cost | Actual cost |
| --- | --- | --- | --- | --- | --- | --- | --- | --- | --- | --- | --- | --- | --- | --- | --- | --- | --- |
| 1 | 1 | **Community Affairs** |  | 30d | 2024-06-24 A | 2024-08-01 |  | 92% | 2.5d | 3d | 0d |  | Community Liaison Officer (CLO) | 480h | 440h | 500 | 460 |
| 2 | 1.1 | Meeting 1 |  | 10d | 2024-06-24 A | 2024-07-05 A |  | 100% |  |  |  |  | CLO | 80h | 80h |  |  |
| 3 | 1.2 | Meeting 2 |  | 10d | 2024-07-06 A | 2024-07-18 A | 2 | 100% |  |  |  | start no earlier than 2024-07-06 | CLO | 80h | 80h |  |  |
| 4 | 1.3 | Final Meeting |  | 10d | 2024-07-19 A | 2024-08-01 | 3 | 75% | 2.5d | 3d |  |  | CLO | 80h | 60h |  |  |
| 5 | 2 | **Site Assessment** |  | 2d | 2024-08-02 | 2024-08-03 | 1 |  |  |  |  |  |  | 32h |  | 2,000 |  |
| 6 | 2.1 | Initial Consultation | milestone | 0d | 2024-08-02 | 2024-08-02 |  |  |  | 3d | 0d |  | Geological Engineer |  |  | 100 |  |
| 7 | 2.2 | Site Reconnaissance | milestone | 0d | 2024-08-02 | 2024-08-02 | 6 |  |  | 3d | 0d |  | Geological Engineer |  |  | 100 |  |
| 8 | 2.3 | Historical Data Review | milestone | 0d | 2024-08-02 | 2024-08-02 | 7 |  |  | 3d | 0d |  | Geological Engineer |  |  | 100 |  |
| 9 | 2.4 | Soil Sampling |  | 2d | 2024-08-02 | 2024-08-03 | 8 |  |  | 3d | 0d | finish no earlier than 2024-08-03 | Field Assistant | 16h |  | 300 |  |
| 10 | 2.5 | Soil Analysis |  | 1d | 2024-08-03 | 2024-08-03 | 9FS-1d |  |  | 3d | 0d |  | Geological Engineer; Lab Technician | 16h |  | 200 |  |
| 11 | 2.6 | Report Preparation | milestone | 0d | 2024-08-03 | 2024-08-03 | 10 |  |  | 3d | 0d |  | Geological Engineer |  |  | 100 |  |
| 12 | 2.7 | Client Presentation | milestone | 0d | 2024-08-03 | 2024-08-03 | 11 |  |  | 3d |  |  | Geological Engineer |  |  | 100 |  |
| 13 | 3 | **Geophysical Survey** |  | 3d | 2024-08-05 | 2024-08-07 | 5 |  |  |  |  |  |  | 48h |  | 6,000 |  |
| 14 | 3.1 | Pre-Survey Planning | milestone | 0d | 2024-08-05 | 2024-08-05 |  |  |  | 3d | 0d | start no earlier than 2024-08-05 | Geophysicist |  |  | 200 |  |
| 15 | 3.2 | Equipment Setup & Calibration | milestone | 0d | 2024-08-05 | 2024-08-05 | 14 |  |  | 3d | 0d |  | Geophysicist; Field Technician |  |  | 300 |  |
| 16 | 3.3 | Field Data Acquisition |  | 2d | 2024-08-05 | 2024-08-06 | 15 |  |  | 3d | 0d | finish no earlier than 2024-08-06 | Field Technician | 16h |  | 1,200 |  |
| 17 | 3.4 | Data Processing & Interpretation |  | 2d | 2024-08-06 | 2024-08-07 | 16FS-1d, 16 |  |  | 3d | 0d | finish no earlier than 2024-08-07 | Geophysicist; Data Analyst | 32h |  | 800 |  |
| 18 | 3.5 | Report Preparation | milestone | 0d | 2024-08-07 | 2024-08-07 | 17 |  |  | 3d |  |  | Geophysicist |  |  | 200 |  |
| 19 | 3.6 | Client Presentation | milestone | 0d | 2024-08-07 | 2024-08-07 | 18 |  |  | 23d |  | start no earlier than 2024-08-07 | Geophysicist |  |  | 300 |  |
| 20 | 4 | Mobilization |  | 2d | 2024-08-08 | 2024-08-09 | 13 |  |  | 3d |  | start no earlier than 2024-06-14 | Drilling Crew; Trucks | 32h |  | 1,500 |  |
| 21 | 5 | Drilling Operations |  | 10d | 2024-08-14 | 2024-08-27 | 20 |  |  | 0d |  | start no earlier than 2024-08-14 | Drilling Crew; Rig; Diesel | 80h |  | 25,000 |  |
| 22 | 6 | Geological Supervision | manual | 10d | 2024-08-14 | 2024-08-27 | 21FS-10d |  |  |  |  |  | Geological Engineer | 80h |  | 2,000 |  |
| 23 | 7 | **Pump Installation** |  | 2d | 2024-08-28 | 2024-08-29 | 22 |  |  |  |  |  |  | 16h |  | 14,000 |  |
| 24 | 7.1 | Pump Site Preparation | milestone | 0d | 2024-08-28 | 2024-08-28 |  |  |  | 1d |  |  | Field Technician; Laborers |  |  | 300 |  |
| 25 | 7.2 | Pump and Equipment Procurement |  | 2d | 2024-08-28 | 2024-08-29 | 24FS-1d |  |  | 0d |  | finish no earlier than 2024-08-29 | Procurement Specialist | 16h |  | 3,000 |  |
| 26 | 7.3 | Installation of Pump | milestone | 0d | 2024-08-29 | 2024-08-29 | 25 |  |  | -1d | 0d |  | Pump Installation Specialist; Electrician; Field Technician |  |  | 5,000 |  |
| 27 | 7.4 | Testing and Commissioning | milestone | 0d | 2024-08-29 | 2024-08-29 | 26 |  |  | -1d | 0d |  | Pump Installation Specialist; Electrician; Field Technician |  |  | 700 |  |
| 28 | 8 | Water Testing |  | 2d | 2024-08-30 | 2024-08-31 | 23 |  |  | 0d |  |  | Water Quality Analyst | 16h |  | 1,500 |  |
| 29 | 9 | Demobilization |  | 2d | 2024-09-02 | 2024-09-03 | 28 |  |  | 0d |  |  | Drilling Crew; Trucks | 32h |  | 1,000 |  |

| ID | WBS | Task | Duration | Start | Finish | Predecessors | Total slack | Resources | Work | Cost |
| --- | --- | --- | --- | --- | --- | --- | --- | --- | --- | --- |
| 30 | 10 | **Site Cleanup** | 1d | 2024-09-04 | 2024-09-04 | 29 | 0d | Cleanup Crew | 16h | 1,000 |
| 31 | 10.1 | Cleanup and Handover | 1d | 2024-09-04 | 2024-09-04 |  | 0d | Installation Specialist | 8h | 500 |
